# Project_Inicial

Schedule from MS Project, 2024-03-14 to 2024-06-25, status date 2024-03-24, A marks actual dates.

## Calendars

- Calendario Projeto: Mon-Fri 08:00-12:00, 13:00-17:00; Sat-Sun off. Exceptions (off unless hours are given): 2024-03-29 (Sexta-feira Santa), 2024-03-31 (Páscoa), 2024-04-25 (Dia da Liberdade), 2024-05-01 (Dia do Trabalhador), 2024-05-30 (Corpo de Deus), 2024-06-10 (Dia de Portugal), 2024-06-13 (Dia do Santo António).

## Resources

| Resource |
| --- |
| Vasco João - 30005819 |
| Diogo Botas - 30009700 |
| Ricardo Biscaia - 30009680 |
| Ricardo Duarte - 30008938 |

## Schedule

| ID | WBS | Task | Duration | Start | Finish | Predecessors | Complete | Remaining | Baseline start | Baseline finish | Baseline duration | Baseline 1 start | Baseline 1 finish | Total slack | Free slack | Resources | Work | Actual work |
| --- | --- | --- | --- | --- | --- | --- | --- | --- | --- | --- | --- | --- | --- | --- | --- | --- | --- | --- |
| 1 | 1 | **ChatFlow** | 67.19d | 2024-03-14 08:00 A | 2024-06-25 09:30 |  | 40% | 40.3d | 2024-03-14 08:00 | 2024-06-25 09:30 | 50.19d | 2024-03-14 08:00 | 2024-06-26 12:00 | 0d |  |  | 1296h | 446h |
| 2 | 1.1 | **Planeamento** | 2.5d | 2024-03-14 08:00 A | 2024-03-18 12:00 A |  | 100% |  |  |  |  | 2024-03-14 08:00 | 2024-03-18 12:00 |  |  |  | 80h | 80h |
| 3 | 1.1.1 | Procurar soluções e arquiteturas semelhantes | 1d | 2024-03-14 08:00 A | 2024-03-14 17:00 A |  | 100% |  |  |  |  | 2024-03-14 08:00 | 2024-03-14 17:00 |  |  | Diogo Botas - 30009700; Ricardo Biscaia - 30009680; Ricardo Duarte - 30008938; Vasco João - 30005819 | 32h | 32h |
| 4 | 1.1.2 | **Pesquisa Incicial** | 1.5d | 2024-03-15 08:00 A | 2024-03-18 12:00 A |  | 100% |  |  |  |  | 2024-03-15 08:00 | 2024-03-18 12:00 |  |  |  | 48h | 48h |
| 5 | 1.1.2.1 | **Definir ferramentas e estrutura do projeto** | 1.5d | 2024-03-15 08:00 A | 2024-03-18 12:00 A |  | 100% |  |  |  |  | 2024-03-15 08:00 | 2024-03-18 12:00 |  |  |  | 48h | 48h |
| 6 | 1.1.2.1.1 | Front-end | 4h | 2024-03-15 08:00 A | 2024-03-15 12:00 A | 3 | 100% |  |  |  |  | 2024-03-15 08:00 | 2024-03-15 12:00 |  |  | Diogo Botas - 30009700; Ricardo Biscaia - 30009680; Ricardo Duarte - 30008938; Vasco João - 30005819 | 16h | 16h |
| 7 | 1.1.2.1.2 | Back-end | 4h | 2024-03-15 13:00 A | 2024-03-15 17:00 A | 6 | 100% |  |  |  |  | 2024-03-15 13:00 | 2024-03-15 17:00 |  |  | Diogo Botas - 30009700; Ricardo Biscaia - 30009680; Ricardo Duarte - 30008938; Vasco João - 30005819 | 16h | 16h |
| 8 | 1.1.2.1.3 | Base de Dados | 4h | 2024-03-18 08:00 A | 2024-03-18 12:00 A | 7 | 100% |  |  |  |  | 2024-03-18 08:00 | 2024-03-18 12:00 |  |  | Diogo Botas - 30009700; Ricardo Biscaia - 30009680; Ricardo Duarte - 30008938; Vasco João - 30005819 | 16h | 16h |
| 9 | 1.2 | **Execução** | 51d | 2024-03-18 13:00 A | 2024-06-03 12:00 | 4 | 45% | 28.22d |  |  |  | 2024-03-18 13:00 | 2024-05-29 12:00 | 0.69d | 0d |  | 856h | 366h |
| 10 | 1.2.1 | **Interface Utilizador** | 19d | 2024-03-18 13:00 A | 2024-04-15 12:00 |  | 31% | 13.06d |  |  |  | 2024-03-18 13:00 | 2024-04-15 12:00 | 30.5d | 0d |  | 160h | 50h |
| 11 | 1.2.1.1 | **Design Página web** | 19d | 2024-03-18 13:00 A | 2024-04-15 12:00 |  | 31% | 13.06d |  |  |  | 2024-03-18 13:00 | 2024-04-15 12:00 | 30.5d |  |  | 160h | 50h |
| 12 | 1.2.1.1.1 | Secção Homepage | 5d | 2024-03-18 13:00 A | 2024-03-25 12:00 |  | 75% | 1.25d |  |  |  | 2024-03-18 13:00 | 2024-03-25 12:00 | 32.5d | 0d | Diogo Botas - 30009700 | 40h | 30h |
| 13 | 1.2.1.1.2 | Secção Workflow | 5d | 2024-03-25 13:00 A | 2024-04-01 12:00 | 12 | 25% | 3.75d |  |  |  | 2024-03-25 13:00 | 2024-04-01 12:00 | 32.25d | 0d | Ricardo Duarte - 30008938 | 40h | 10h |
| 14 | 1.2.1.1.3 | Secção Chabot | 5d | 2024-04-01 13:00 A | 2024-04-08 12:00 | 13 | 25% | 3.75d |  |  |  | 2024-04-01 13:00 | 2024-04-08 12:00 | 31d | 0d | Ricardo Duarte - 30008938 | 40h | 10h |
| 15 | 1.2.1.1.4 | Secção Utilizador | 5d | 2024-04-08 13:00 | 2024-04-15 12:00 | 14 |  |  |  |  |  | 2024-04-08 13:00 | 2024-04-15 12:00 | 30.5d | 6d | Diogo Botas - 30009700 | 40h |  |
| 16 | 1.2.2 | **Servidor** | 1d | 2024-03-18 13:00 A | 2024-03-19 12:00 A |  | 100% |  |  |  |  | 2024-03-18 13:00 | 2024-03-19 12:00 |  |  |  | 8h | 8h |
| 17 | 1.2.2.1 | Implementar Servidor Básico | 1h | 2024-03-18 13:00 A | 2024-03-18 14:00 A |  | 100% |  |  |  |  | 2024-03-18 13:00 | 2024-03-18 14:00 |  |  | Vasco João - 30005819 | 1h | 1h |
| 18 | 1.2.2.2 | **Implementar rotas e integrar com base de dados** | 0.88d | 2024-03-18 14:00 A | 2024-03-19 12:00 A |  | 100% |  |  |  |  | 2024-03-18 14:00 | 2024-03-19 12:00 |  |  |  | 7h | 7h |
| 19 | 1.2.2.2.1 | Autenticação | 1h | 2024-03-18 14:00 A | 2024-03-18 15:00 A | 17 | 100% |  |  |  |  | 2024-03-18 14:00 | 2024-03-18 15:00 |  |  | Vasco João - 30005819 | 1h | 1h |
| 20 | 1.2.2.2.2 | Utilizador | 1h | 2024-03-18 15:00 A | 2024-03-18 16:00 A | 19 | 100% |  |  |  |  | 2024-03-18 15:00 | 2024-03-18 16:00 |  |  | Vasco João - 30005819 | 1h | 1h |
| 21 | 1.2.2.2.3 | Conversas | 1h | 2024-03-18 16:00 A | 2024-03-18 17:00 A | 20 | 100% |  |  |  |  | 2024-03-18 16:00 | 2024-03-18 17:00 |  |  | Vasco João - 30005819 | 1h | 1h |
| 22 | 1.2.2.2.4 | Mensagens | 1h | 2024-03-19 08:00 A | 2024-03-19 09:00 A | 21 | 100% |  |  |  |  | 2024-03-19 08:00 | 2024-03-19 09:00 |  |  | Vasco João - 30005819 | 1h | 1h |
| 23 | 1.2.2.2.5 | Workspace | 1h | 2024-03-19 09:00 A | 2024-03-19 10:00 A | 22 | 100% |  |  |  |  | 2024-03-19 09:00 | 2024-03-19 10:00 |  |  | Vasco João - 30005819 | 1h | 1h |
| 24 | 1.2.2.2.6 | Folder | 1h | 2024-03-19 10:00 A | 2024-03-19 11:00 A | 23 | 100% |  |  |  |  | 2024-03-19 10:00 | 2024-03-19 11:00 |  |  | Vasco João - 30005819 | 1h | 1h |
| 25 | 1.2.2.2.7 | File | 1h | 2024-03-19 11:00 A | 2024-03-19 12:00 A | 24 | 100% |  |  |  |  | 2024-03-19 11:00 | 2024-03-19 12:00 |  |  | Vasco João - 30005819 | 1h | 1h |

| ID | WBS | Task | Duration | Start | Finish | Predecessors | Complete | Remaining | Baseline 1 start | Baseline 1 finish | Total slack | Free slack | Resources | Work | Actual work |
| --- | --- | --- | --- | --- | --- | --- | --- | --- | --- | --- | --- | --- | --- | --- | --- |
| 26 | 1.2.3 | **Base de Dados** | 5d | 2024-03-19 13:00 A | 2024-03-26 12:00 A |  | 100% |  | 2024-03-19 13:00 | 2024-03-26 12:00 |  |  |  | 40h | 40h |
| 27 | 1.2.3.1 | Organizar Coleções | 2d | 2024-03-19 13:00 A | 2024-03-21 12:00 A | 18 | 100% |  | 2024-03-19 13:00 | 2024-03-21 12:00 |  |  | Vasco João - 30005819 | 16h | 16h |
| 28 | 1.2.3.2 | Definir parâmetros obrigatórios nos documentos | 3d | 2024-03-21 13:00 A | 2024-03-26 12:00 A | 27 | 100% |  | 2024-03-21 13:00 | 2024-03-26 12:00 |  |  | Vasco João - 30005819 | 24h | 24h |
| 29 | 1.2.4 | **Autenticação** | 16d | 2024-03-26 13:00 A | 2024-04-18 12:00 |  | 79% | 3.43d | 2024-03-26 13:00 | 2024-04-18 12:00 | 29.69d |  |  | 136h | 88h |
| 30 | 1.2.4.1 | Registar, Login, Log out | 5d | 2024-03-26 13:00 A | 2024-04-02 12:00 A | 18, 26 | 100% |  | 2024-03-26 13:00 | 2024-04-02 12:00 |  |  | Vasco João - 30005819 | 40h | 40h |
| 31 | 1.2.4.2 | Manter sessão através de JWTs e cookies | 3d | 2024-04-02 13:00 A | 2024-04-05 12:00 A | 30 | 100% |  | 2024-04-02 13:00 | 2024-04-05 12:00 |  |  | Vasco João - 30005819 | 24h | 24h |
| 32 | 1.2.4.3 | Verificação de email | 3d | 2024-04-05 13:00 A | 2024-04-10 12:00 A | 31 | 100% |  | 2024-04-05 13:00 | 2024-04-10 12:00 |  |  | Vasco João - 30005819 | 24h | 24h |
| 33 | 1.2.4.4 | Integração front-end | 3d | 2024-04-15 13:00 | 2024-04-18 12:00 | 32, 10 |  |  | 2024-04-15 13:00 | 2024-04-18 12:00 | 30d |  | Diogo Botas - 30009700; Vasco João - 30005819 | 48h |  |
| 34 | 1.2.5 | **Utilizador** | 4.5d | 2024-04-18 13:00 A | 2024-04-25 12:00 |  | 60% | 1.8d | 2024-04-18 13:00 | 2024-04-25 12:00 | 25.19d |  |  | 56h | 24h |
| 35 | 1.2.5.1 | Perfil de utilizador | 2d | 2024-04-18 13:00 A | 2024-04-22 12:00 A | 26, 29 | 100% |  | 2024-04-18 13:00 | 2024-04-22 12:00 |  |  | Vasco João - 30005819 | 16h | 16h |
| 36 | 1.2.5.2 | Permitir alteração de dados e eliminação de conta | 1d | 2024-04-22 13:00 A | 2024-04-23 12:00 A | 35 | 100% |  | 2024-04-22 13:00 | 2024-04-23 12:00 |  |  | Vasco João - 30005819 | 8h | 8h |
| 37 | 1.2.5.3 | Integração front-end | 2d | 2024-04-23 13:00 | 2024-04-25 12:00 | 36, 15 |  |  | 2024-04-23 13:00 | 2024-04-25 12:00 | 25d |  | Vasco João - 30005819; Diogo Botas - 30009700 | 32h |  |
| 38 | 1.2.6 | **Sistema workflow** | 8.5d | 2024-04-25 13:00 A | 2024-05-09 12:00 |  | 60% | 3.4d | 2024-04-25 13:00 | 2024-05-09 12:00 | 14.5d | 14d |  | 160h | 96h |
| 39 | 1.2.6.1 | Criação e acesso a pastas | 3d | 2024-04-25 13:00 A | 2024-04-30 12:00 A | 26, 34 | 100% |  | 2024-04-25 13:00 | 2024-04-30 12:00 |  |  | Vasco João - 30005819; Ricardo Duarte - 30008938 | 48h | 48h |
| 40 | 1.2.6.2 | Guardar e aceder a ficheiros | 3d | 2024-04-30 13:00 A | 2024-05-03 12:00 A | 39 | 100% |  | 2024-04-30 13:00 | 2024-05-03 12:00 |  |  | Vasco João - 30005819; Ricardo Duarte - 30008938 | 48h | 48h |
| 41 | 1.2.6.3 | Integração front-end | 4d | 2024-05-03 13:00 | 2024-05-09 12:00 | 40, 13 |  |  | 2024-05-03 13:00 | 2024-05-09 12:00 | 14d |  | Vasco João - 30005819; Ricardo Duarte - 30008938 | 64h |  |
| 42 | 1.2.7 | **Chatbot** | 43d | 2024-03-26 13:00 A | 2024-05-29 12:00 |  | 24% | 32.6d | 2024-03-26 13:00 | 2024-05-29 12:00 | 0.5d | 0d |  | 272h | 60h |
| 43 | 1.2.7.1 | Integrar Modulo OpenAI | 5d | 2024-03-26 13:00 A | 2024-04-02 12:00 A | 18, 26 | 100% |  | 2024-03-26 13:00 | 2024-04-02 12:00 |  |  | Ricardo Biscaia - 30009680 | 40h | 40h |
| 44 | 1.2.7.2 | Responder a mensagens | 5d | 2024-04-02 13:00 A | 2024-04-09 12:00 | 43 | 50% | 2.5d | 2024-04-02 13:00 | 2024-04-09 12:00 | 14d | 0d | Ricardo Biscaia - 30009680 | 40h | 20h |
| 45 | 1.2.7.3 | Guardar conversas | 3d | 2024-04-09 13:00 | 2024-04-12 12:00 | 44 |  |  | 2024-04-09 13:00 | 2024-04-12 12:00 | 13d |  | Ricardo Biscaia - 30009680 | 24h |  |
| 46 | 1.2.7.4 | Criar Resumos e reçatórios baseados em ficheiros guardados | 15d | 2024-05-03 13:00 | 2024-05-24 12:00 | 45, 40 |  |  | 2024-05-03 13:00 | 2024-05-24 12:00 | 0.69d | 0d | Ricardo Biscaia - 30009680 | 120h |  |
| 47 | 1.2.7.5 | Integração front-end | 3d | 2024-05-24 13:00 | 2024-05-29 12:00 | 14, 46 |  |  | 2024-05-24 13:00 | 2024-05-29 12:00 | 0.5d |  | Ricardo Biscaia - 30009680; Ricardo Duarte - 30008938 | 48h |  |
| 48 | 1.2.8 | Implementação de serviço de nuvem | 2d | 2024-05-29 13:00 | 2024-05-31 12:00 | 38, 42 |  |  | 2024-03-18 13:00 | 2024-03-25 12:00 | 0.5d | 0d | Vasco João - 30005819 | 16h |  |
| 49 | 1.2.9 | Implementar https | 1d | 2024-05-31 13:00 | 2024-06-03 12:00 | 48 |  |  | 2024-03-18 13:00 | 2024-03-25 12:00 | 0.69d |  | Vasco João - 30005819 | 8h |  |

| ID | WBS | Task | Type | Duration | Start | Finish | Predecessors | Complete | Remaining | Baseline start | Baseline finish | Baseline duration | Baseline 1 start | Baseline 1 finish | Total slack | Free slack | Constraint | Resources | Work |
| --- | --- | --- | --- | --- | --- | --- | --- | --- | --- | --- | --- | --- | --- | --- | --- | --- | --- | --- | --- |
| 50 | 1.3 | **Controlo** |  | 64.19d | 2024-03-19 08:00 A | 2024-06-25 09:30 |  | 53% | 29.95d |  |  |  | 2024-03-19 08:00 | 2024-06-25 09:30 | 0d |  |  |  |  |
| 51 | 1.3.1 | **Reunião Semanal** |  | 64.19d | 2024-03-19 08:00 A | 2024-06-25 09:30 |  | 53% | 29.95d | 2024-03-19 08:00 | 2024-06-25 09:30 | 47.19d | 2024-03-19 08:00 | 2024-06-25 09:30 | 0d |  |  |  |  |
| 52 | 1.3.1.1 | Reunião Semanal 1 | manual | 1.5h | 2024-03-19 08:00 A | 2024-03-19 09:30 A |  | 100% |  | 2024-03-19 08:00 | 2024-03-19 09:30 | 1.5h | 2024-03-19 08:00 | 2024-03-19 09:30 |  |  | start no earlier than 2024-03-19 08:00 |  |  |
| 53 | 1.3.1.2 | Reunião Semanal 2 | manual | 1.5h | 2024-03-26 08:00 A | 2024-03-26 09:30 A |  | 100% |  | 2024-03-26 08:00 | 2024-03-26 09:30 | 1.5h | 2024-03-26 08:00 | 2024-03-26 09:30 |  |  | start no earlier than 2024-03-26 08:00 |  |  |
| 54 | 1.3.1.3 | Reunião Semanal 3 | manual | 1.5h | 2024-04-02 08:00 A | 2024-04-02 09:30 A |  | 100% |  | 2024-04-02 08:00 | 2024-04-02 09:30 | 1.5h | 2024-04-02 08:00 | 2024-04-02 09:30 |  |  | start no earlier than 2024-04-02 08:00 |  |  |
| 55 | 1.3.1.4 | Reunião Semanal 4 | manual | 1.5h | 2024-04-09 08:00 A | 2024-04-09 09:30 A |  | 100% |  | 2024-04-09 08:00 | 2024-04-09 09:30 | 1.5h | 2024-04-09 08:00 | 2024-04-09 09:30 |  |  | start no earlier than 2024-04-09 08:00 |  |  |
| 56 | 1.3.1.5 | Reunião Semanal 5 | manual | 1.5h | 2024-04-16 08:00 A | 2024-04-16 09:30 A |  | 100% |  | 2024-04-16 08:00 | 2024-04-16 09:30 | 1.5h | 2024-04-16 08:00 | 2024-04-16 09:30 |  |  | start no earlier than 2024-04-16 08:00 |  |  |
| 57 | 1.3.1.6 | Reunião Semanal 6 | manual | 1.5h | 2024-04-23 08:00 A | 2024-04-23 09:30 A |  | 100% |  | 2024-04-23 08:00 | 2024-04-23 09:30 | 1.5h | 2024-04-23 08:00 | 2024-04-23 09:30 |  |  | start no earlier than 2024-04-23 08:00 |  |  |
| 58 | 1.3.1.7 | Reunião Semanal 7 | manual | 1.5h | 2024-04-30 08:00 A | 2024-04-30 09:30 A |  | 100% |  | 2024-04-30 08:00 | 2024-04-30 09:30 | 1.5h | 2024-04-30 08:00 | 2024-04-30 09:30 |  |  | start no earlier than 2024-04-30 08:00 |  |  |
| 59 | 1.3.1.8 | Reunião Semanal 8 | manual | 1.5h | 2024-05-07 08:00 A | 2024-05-07 09:30 A |  | 100% |  | 2024-05-07 08:00 | 2024-05-07 09:30 | 1.5h | 2024-05-07 08:00 | 2024-05-07 09:30 |  |  | start no earlier than 2024-05-07 08:00 |  |  |
| 60 | 1.3.1.9 | Reunião Semanal 9 | manual | 1.5h | 2024-05-14 08:00 | 2024-05-14 09:30 |  |  |  | 2024-05-14 08:00 | 2024-05-14 09:30 | 1.5h | 2024-05-14 08:00 | 2024-05-14 09:30 |  |  | start no earlier than 2024-05-14 08:00 |  |  |
| 61 | 1.3.1.10 | Reunião Semanal 10 | manual | 1.5h | 2024-05-21 08:00 | 2024-05-21 09:30 |  |  |  | 2024-05-21 08:00 | 2024-05-21 09:30 | 1.5h | 2024-05-21 08:00 | 2024-05-21 09:30 |  |  | start no earlier than 2024-05-21 08:00 |  |  |
| 62 | 1.3.1.11 | Reunião Semanal 11 | manual | 1.5h | 2024-05-28 08:00 | 2024-05-28 09:30 |  |  |  | 2024-05-28 08:00 | 2024-05-28 09:30 | 1.5h | 2024-05-28 08:00 | 2024-05-28 09:30 |  |  | start no earlier than 2024-05-28 08:00 |  |  |
| 63 | 1.3.1.12 | Reunião Semanal 12 | manual | 1.5h | 2024-06-04 08:00 | 2024-06-04 09:30 |  |  |  | 2024-06-04 08:00 | 2024-06-04 09:30 | 1.5h | 2024-06-04 08:00 | 2024-06-04 09:30 |  |  | start no earlier than 2024-06-04 08:00 |  |  |
| 64 | 1.3.1.13 | Reunião Semanal 13 | manual | 1.5h | 2024-06-11 08:00 | 2024-06-11 09:30 |  |  |  | 2024-06-11 08:00 | 2024-06-11 09:30 | 1.5h | 2024-06-11 08:00 | 2024-06-11 09:30 |  |  | start no earlier than 2024-06-11 08:00 |  |  |
| 65 | 1.3.1.14 | Reunião Semanal 14 | manual | 1.5h | 2024-06-18 08:00 | 2024-06-18 09:30 |  |  |  | 2024-06-18 08:00 | 2024-06-18 09:30 | 1.5h | 2024-06-18 08:00 | 2024-06-18 09:30 |  |  | start no earlier than 2024-06-18 08:00 |  |  |
| 66 | 1.3.1.15 | Reunião Semanal 15 | manual | 1.5h | 2024-06-25 08:00 | 2024-06-25 09:30 |  |  |  | 2024-06-25 08:00 | 2024-06-25 09:30 | 1.5h | 2024-06-25 08:00 | 2024-06-25 09:30 |  |  | start no earlier than 2024-06-25 08:00 |  |  |
| 67 | 1.4 | **Encerramento** |  | 13d | 2024-06-03 13:00 | 2024-06-24 12:00 | 9 |  |  |  |  |  | 2024-05-29 13:00 | 2024-06-26 12:00 | 0.69d |  |  |  | 360h |
| 68 | 1.4.1 | **Documentos Associados** |  | 13d | 2024-06-03 13:00 | 2024-06-24 12:00 |  |  |  |  |  |  | 2024-05-29 13:00 | 2024-06-26 12:00 | 0.69d |  |  |  | 360h |
| 69 | 1.4.1.1 | Manual de Instalação e de Administrador |  | 2d | 2024-06-03 13:00 | 2024-06-05 12:00 |  |  |  |  |  |  | 2024-05-29 13:00 | 2024-06-05 12:00 | 0.69d | 0d |  | Ricardo Duarte - 30008938 | 16h |
| 70 | 1.4.1.2 | Manual de Utilizador |  | 3d | 2024-06-05 13:00 | 2024-06-10 12:00 | 69 |  |  |  |  |  | 2024-06-05 13:00 | 2024-06-12 12:00 | 0.19d | 0d |  | Ricardo Duarte - 30008938 | 24h |
| 71 | 1.4.1.3 | Relatório |  | 10d | 2024-06-10 13:00 | 2024-06-24 12:00 | 70 |  |  |  |  |  | 2024-06-12 13:00 | 2024-06-26 12:00 | 0.19d |  |  | Diogo Botas - 30009700; Ricardo Biscaia - 30009680; Ricardo Duarte - 30008938; Vasco João - 30005819 | 320h |
